Schedule from GanttProject, 2017-02-13 to 2017-05-25.

## Calendars

- Project calendar: Mon-Sun working.

## Resources

| Resource |
| --- |
| ashahid |
| mkaleem |
| msalman |
| mirfan |
| ansarif |
| jsyed |
| muusman |
| bwasim |
| waqarh |
| rasheed |

## Schedule

| ID | WBS | Task | Duration | Start | Finish | Complete | Resources | Jira |
| --- | --- | --- | --- | --- | --- | --- | --- | --- |
| 1 | 1 | **Project** | 102d | 2017-02-13 | 2017-05-25 | 89% |  |  |
| 2 | 1.1 | **POC-Phase-1** | 73d | 2017-02-13 | 2017-04-26 | 100% |  | BSP-8406 |
| 3 | 1.1.1 | **Misc** | 17d | 2017-04-10 | 2017-04-26 | 100% |  | BSP-8422 |
| 4 | 1.1.1.1 | Cleanup for SC and NRS BSPs/OS changes | 3d | 2017-04-10 | 2017-04-12 | 100% | ashahid | BSP-8410 |
| 5 | 1.1.1.2 | Improvement required in newly designed device discovery mechanism. | 2d | 2017-04-25 | 2017-04-26 | -100% |  | OS-7710 |
| 6 | 1.1.1.3 | Investigate the need for DVS_Label_Copy() function. | 2d | 2017-04-25 | 2017-04-26 | -100% | ashahid | OS-7756 |
| 7 | 1.1.1.4 | Replace CPU IOCTLs with new device manager's functionality list. | 2d | 2017-04-19 | 2017-04-20 | 100% | mkaleem | OS-7692 |
| 8 | 1.1.1.5 | Incorporate Code review feedback on lwserial/DM and other unification changes. | 2d | 2017-04-19 | 2017-04-20 | 100% | ashahid | BSP-8424 |
| 9 | 1.1.1.6 | Investigate if we can remove lable_list and label_cnt from open functions for devices. | 2d | 2017-04-25 | 2017-04-26 | 100% | ashahid | OS-7754 |
| 10 | 1.1.1.7 | Allow multiple open calls for a device | 2d | 2017-04-25 | 2017-04-26 | 100% | ashahid | OS-7729 |
| 11 | 1.1.1.8 | Documentation | 4d | 2017-04-18 | 2017-04-21 | 100% |  | BSP-8427 |
| 12 | 1.1.1.9 | Update DVFS, UII and Hibernate services to use new device manager. | 4d | 2017-04-18 | 2017-04-21 | 100% | msalman | OS-7691 |
| 13 | 1.1.2 | **Unified BSP** | 57d | 2017-02-28 | 2017-04-25 | 100% |  | BSP-8345 |
| 14 | 1.1.2.1 | **New BSP Structure and Integration** | 57d | 2017-02-28 | 2017-04-25 | 100% |  | BSP-8357 |
| 15 | 1.1.2.1.1 | Unified BSP Interface proposal | 11d | 2017-02-28 | 2017-03-10 | 100% | mirfan | BSP-8264 |
| 16 | 1.1.2.1.2 | Unifying BSP Initialization flow for NRS and SC BSPs | 1d | 2017-03-31 | 2017-03-31 | 100% | ashahid | BSP-8353 |
| 17 | 1.1.2.1.3 | Integration of SC BSP with DM | 2d | 2017-03-27 | 2017-03-28 | 100% | ashahid | BSP-8354 |
| 18 | 1.1.2.1.4 | Integration of Unified drivers and updated BSPs | 9d | 2017-03-29 | 2017-04-06 | 100% | ashahid | BSP-8355 |
| 19 | 1.1.2.1.5 | Structural updates to BSP v4.0 | 6d | 2017-04-20 | 2017-04-25 | 100% | mirfan | BSP-8425 |
| 20 | 1.1.2.2 | **Unified Serial Driver** | 48d | 2017-03-01 | 2017-04-17 | 100% |  | BSP-8221 |
| 21 | 1.1.2.2.1 | **Design** | 48d | 2017-03-01 | 2017-04-17 | 100% |  | BSP-8227 |
| 22 | 1.1.2.2.1.1 | Unified BSP Interface proposal | 10d | 2017-03-01 | 2017-03-10 | 100% | ashahid | BSP-8225 |
| 23 | 1.1.2.2.2 | Serial Driver implementation | 11d | 2017-03-14 | 2017-03-24 | 100% | ashahid | BSP-8229 |
| 24 | 1.1.2.3 | **Unified Ethernet Driver** | 34d | 2017-03-15 | 2017-04-17 | 100% |  | BSP-8306 |
| 25 | 1.1.2.3.1 | Discuss and finalize the Nucleus Buffers proposal | 6d | 2017-03-22 | 2017-03-27 | 100% | ansarif | BSP-8326 |
| 26 | 1.1.2.3.2 | Implement Buffers support and interface LWNET with new Ethernet driver | 10d | 2017-04-05 | 2017-04-14 | 100% | jsyed | BSP-8327 |
| 27 | 1.1.2.3.3 | Update LWNET to use the new buffers | 19d | 2017-03-27 | 2017-04-14 | 100% | muusman | BSP-8325 |
| 28 | 1.1.2.3.4 | Define a new BSP and OS driver interface for the Ethernet driver (BSP team and MW team) | 6d | 2017-03-15 | 2017-03-20 | 100% | ansarif | BSP-8324 |
| 29 | 1.1.2.3.5 | Unified Ethernet driver Implementation for Sabrelite | 23d | 2017-03-20 | 2017-04-11 | 100% | bwasim | BSP-8230 |
| 30 | 1.1.2.3.6 | Unified Ethernet driver Implementation for QEMU (realview_eb_ct926ejs) | 4d | 2017-04-04 | 2017-04-07 | 100% | ansarif | BSP-8401 |

| ID | WBS | Task | Duration | Start | Finish | Complete | Resources | Jira |
| --- | --- | --- | --- | --- | --- | --- | --- | --- |
| 31 | 1.1.3 | **Device Manager Remodal** | 64d | 2017-02-13 | 2017-04-17 | 100% |  | BSP-8299 |
| 32 | 1.1.3.1 | **Design** | 64d | 2017-02-13 | 2017-04-17 | 100% |  | BSP-8227 |
| 33 | 1.1.3.1.1 | Device Manager Code Review | 16d | 2017-02-13 | 2017-02-28 | 100% | mirfan | BSP-8223 |
| 34 | 1.1.3.1.2 | Prepare a proposal to remodal Device Manager | 16d | 2017-02-13 | 2017-02-28 | 100% | ashahid | BSP-8222 |
| 35 | 1.1.3.2 | **Device Manager implementation** | 40d | 2017-03-09 | 2017-04-17 | 100% |  | BSP-8228 |
| 36 | 1.1.3.2.1 | **Device Labels update** | 2d | 2017-03-13 | 2017-03-14 | 100% | mirfan | OS-7561 |
| 37 | 1.1.3.2.1.1 | Implement new labeling scheme for Device Manager | 2d | 2017-03-13 | 2017-03-14 | 100% | msalman | OS-7541 |
| 38 | 1.1.3.2.1.2 | Update the Device Manager metadata files to generate labels. | 1d | 2017-03-14 | 2017-03-14 | 100% | msalman | OS-7542 |
| 39 | 1.1.3.2.2 | **Updates to Device Registry** | 23d | 2017-03-13 | 2017-04-04 | 100% | mirfan | OS-7543 |
| 40 | 1.1.3.2.2.1 | Removal of device sessions form Device Manager. | 1d | 2017-03-13 | 2017-03-13 | 100% | mkaleem | OS-7544 |
| 41 | 1.1.3.2.2.2 | Update device Open/Close mechanism to handle removal of device sessions form Device Manager | 2d | 2017-03-16 | 2017-03-17 | 100% | mkaleem | OS-7545 |
| 42 | 1.1.3.2.3 | **Device Functionality Lists** | 22d | 2017-03-14 | 2017-04-04 | 100% | mirfan | OS-7546 |
| 43 | 1.1.3.2.3.1 | Add support of Functionality lists to Device Manager | 2d | 2017-03-26 | 2017-03-27 | 100% | mkaleem | OS-7547 |
| 44 | 1.1.3.2.3.2 | Update device registration flow via DVC_Dev_Register. | 1d | 2017-03-15 | 2017-03-15 | 100% | mkaleem | OS-7548 |
| 45 | 1.1.3.2.3.3 | Update device unregistration flow via DVC_Dev_Unregister. | 1d | 2017-03-14 | 2017-03-14 | 100% | mkaleem | OS-7549 |
| 46 | 1.1.3.2.4 | **Device Manager New APIs** | 21d | 2017-03-15 | 2017-04-04 | 100% | mirfan | OS-7550 |
| 47 | 1.1.3.2.4.1 | Implement DVC_Dev_Request API | 1d | 2017-03-15 | 2017-03-15 | 100% | msalman | OS-7551 |
| 48 | 1.1.3.2.4.2 | Implement DVC_Dev_Get_Instance API. | 1d | 2017-03-15 | 2017-03-15 | 100% | msalman | OS-7552 |
| 49 | 1.1.3.2.5 | **Device Manager Deprecated APIs** | 14d | 2017-03-16 | 2017-03-29 | 100% | mirfan | OS-7553 |
| 50 | 1.1.3.2.5.1 | Remove Device Manager's deprecated APIs (DVC_Dev_Read/Write and DVC_Dev_IOCTL) | 1d | 2017-03-16 | 2017-03-16 | 100% | msalman | OS-7554 |
| 51 | 1.1.3.2.6 | **Device Discovery Mechanism** | 7d | 2017-03-29 | 2017-04-04 | 100% | mirfan | OS-7556 |
| 52 | 1.1.3.2.6.1 | Remove known_id_list and its references from device discovery | 2d | 2017-03-30 | 2017-03-31 | 100% | mkaleem | OS-7557 |
| 53 | 1.1.3.2.6.2 | Implement APIs and code updated for cases where new device is added to the system | 1d | 2017-03-29 | 2017-03-29 | 100% | mkaleem | OS-7558 |
| 54 | 1.1.3.2.6.3 | Implement APIs and code updated for cases where new listener is added to the system | 1d | 2017-03-31 | 2017-03-31 | 100% | mkaleem | OS-7559 |
| 55 | 1.1.3.2.6.4 | Update internals of DVC_Reg_Change_Search in accordance with the new design proposal. | 1d | 2017-03-31 | 2017-03-31 | 100% | mkaleem | OS-7560 |

| ID | WBS | Task | Duration | Start | Finish | Complete | Resources | Jira |
| --- | --- | --- | --- | --- | --- | --- | --- | --- |
| 56 | 1.1.3.2.7 | **Prototype Power management services** | 20d | 2017-03-22 | 2017-04-10 | 100% |  | OS-7636 |
| 57 | 1.1.3.2.7.1 | Prototype Power management services with new Device Manager. | 1d | 2017-03-22 | 2017-03-22 | 100% | msalman | OS-7555 |
| 58 | 1.1.3.2.7.2 | Integrate functionality list to power services | 2d | 2017-03-30 | 2017-03-31 | 100% | msalman | OS-7635 |
| 59 | 1.1.3.2.7.3 | modify DVC_Dev_ID_Open to return device handle if device is already opened in case of power labels | 1d | 2017-04-10 | 2017-04-10 | 100% | msalman | OS-7669 |
| 60 | 1.1.3.2.7.4 | Modify DVC_Dev_Open to return functionality list after opening device | 1d | 2017-04-10 | 2017-04-10 | 100% | msalman | OS-7668 |
| 61 | 1.1.3.2.8 | Incorporate Design Review Feedback | 5d | 2017-03-09 | 2017-03-13 | 100% | mirfan | BSP-8226 |
| 62 | 1.2 | **Phase-2** | 23d | 2017-04-27 | 2017-05-19 | 49% |  | BSP-8405 |
| 63 | 1.2.1 | **BSP Restructure** | 4d | 2017-05-12 | 2017-05-15 |  |  | BSP-8448 |
| 64 | 1.2.1.1 | Revisit HAL and analyze it further for completion. | 4d | 2017-05-12 | 2017-05-15 |  | ashahid | BSP-8441 |
| 65 | 1.2.2 | **DM Investigations** | 22d | 2017-04-27 | 2017-05-18 | 24% |  | OS-7755 |
| 66 | 1.2.2.1 | Explore some possible optimizations. | 4d | 2017-05-12 | 2017-05-15 |  | ashahid | OS-7728 |
| 67 | 1.2.2.2 | Explore DVC_Reg_Change_Search() and device discovery mechanism for possible optimizations | 2d | 2017-04-27 | 2017-04-28 | 100% | ashahid | OS-7731 |
| 68 | 1.2.2.3 | Investigate possibility of using string labels instead of 16-bit numeric labels. | 2d | 2017-05-16 | 2017-05-17 |  | waqarh | OS-7709 |
| 69 | 1.2.2.4 | Investigate if DV_DEV_ID can be replaced by DV_DEV_HANDLE | 1d | 2017-05-02 | 2017-05-02 | 100% | mirfan | OS-7753 |
| 70 | 1.2.2.5 | Investigate if we still need both Active Command Count and locking mechanism | 1d | 2017-05-03 | 2017-05-03 | 100% | mirfan | OS-7763 |
| 71 | 1.2.2.6 | Investigate if DVC_Dev_ID_Get() can be made internal | 1d | 2017-05-03 | 2017-05-03 | 100% | mirfan | OS-7764 |
| 72 | 1.2.2.7 | Explore if there's a way of handling power services other than having a label for it. | 1d | 2017-05-18 | 2017-05-18 |  | mirfan | OS-7765 |
| 73 | 1.2.3 | **DM Improvements** | 14d | 2017-04-27 | 2017-05-10 | 100% |  | BSP-8447 |
| 74 | 1.2.3.1 | Update DVFS, UII and Hibernate services to use new device manager. | 1d | 2017-04-27 | 2017-04-27 | 100% | msalman | OS-7767 |
| 75 | 1.2.3.2 | DVC_Reg_Change_Notify calls NU_Obtain_Semaphore which is potentially harmful when called from non-task context | 2d | 2017-05-08 | 2017-05-09 | 100% | ashahid | OS-7688 |
| 76 | 1.2.3.3 | Update NU_PM_Restore_Hibernate_Device() function to use updated DVS_Dev_Handle_Get() logic | 2d | 2017-05-01 | 2017-05-02 | 100% | msalman | OS-7725 |
| 77 | 1.2.3.4 | DVC_Dev_Open() should take label instead of a pointer to label in parameter. | 2d | 2017-05-08 | 2017-05-09 | 100% | mkaleem | OS-7726 |
| 78 | 1.2.3.5 | Some DM functions needs to be complied out of SC build others to be removed completely | 2d | 2017-05-08 | 2017-05-09 | 100% | mkaleem | OS-7752 |
| 79 | 1.2.3.6 | Update source code of DM w.r.t. Nucleus's coding standard | 2d | 2017-05-09 | 2017-05-10 | 100% | mkaleem | OS-7724 |
| 80 | 1.2.3.7 | Update and test the device's unregistration and close flows. | 1d | 2017-04-28 | 2017-04-28 | 100% | mirfan | OS-7758 |
| 81 | 1.2.3.8 | Remove externs for system memory and replace it by retrieval via API | 1d | 2017-04-27 | 2017-04-27 | 100% | mirfan | OS-7759 |
| 82 | 1.2.3.9 | The DVC_Dev_Register() API should not call NU_Sleep() | 1d | 2017-04-27 | 2017-04-27 | 100% | mirfan | OS-7760 |
| 83 | 1.2.3.10 | Do not create an EventGroup for every device. | 2d | 2017-04-27 | 2017-04-28 | 100% | mirfan | OS-7761 |
| 84 | 1.2.4 | Integration | 5d | 2017-05-12 | 2017-05-16 |  |  | OS-7757 |

| ID | WBS | Task | Duration | Start | Finish | Resources | Jira |
| --- | --- | --- | --- | --- | --- | --- | --- |
| 85 | 1.3 | **Backlog** | 14d | 2017-05-12 | 2017-05-25 |  | BSP-8444 |
| 86 | 1.3.1 | Need to implement a mechanism to report device busy status to device manager. | 5d | 2017-05-12 | 2017-05-16 | rasheed | OS-7779 |
| 87 | 1.3.2 | Add function headers to HAL | 1d | 2017-05-17 | 2017-05-17 | ashahid | BSP-8439 |
| 88 | 1.3.3 | Update nu_bsp_drvr_serial_pl011_init() to support runlevel start/stop | 1d | 2017-05-18 | 2017-05-18 | ashahid | BSP-8440 |
| 89 | 1.3.4 | Implement NU_Serial_Configure() API | 1d | 2017-05-19 | 2017-05-19 | ashahid | BSP-8442 |
| 90 | 1.3.5 | Fix Serial_Tgt_Read() function to check for available data before reading it. | 3d | 2017-05-20 | 2017-05-22 | ashahid | BSP-8443 |
| 91 | 1.3.6 | Add DVC_Dev_Config() API | 2d | 2017-05-23 | 2017-05-24 | ashahid | OS-7727 |
| 92 | 1.3.7 | Enable reads from registry in DM | 1d | 2017-05-25 | 2017-05-25 | ashahid | OS-7730 |
