Schedule from GanttProject, 2017-04-11 to 2017-05-26.

## Calendars

- Project calendar: Mon-Sun working.

## Resources

| Resource |
| --- |
| abdurr |
| ykhan |
| mhaseeb |
| fusman |
| emalik |
| aanwar |
| vashi |

## Schedule

| ID | WBS | Task | Duration | Start | Finish | Complete | Resources | Jira |
| --- | --- | --- | --- | --- | --- | --- | --- | --- |
| 1 | 1 | **Project** | 46d | 2017-04-11 | 2017-05-26 | 69% |  |  |
| 2 | 1.1 | **Requirement-1** | 46d | 2017-04-11 | 2017-05-26 | 69% |  | NUCDM-58 |
| 3 | 1.1.1 | **Development** | 42d | 2017-04-11 | 2017-05-22 | 82% |  | NUCDM-56 |
| 4 | 1.1.1.1 | MEL-1: Verify that NU/MEL config is working and rpmsg communication can be done | 8d | 2017-04-13 | 2017-04-20 | 86% | abdurr | NUCDM-17 |
| 5 | 1.1.1.2 | Integrate changes into MEL build system | 2d | 2017-04-18 | 2017-04-19 | -100% | ykhan | NUCDM-18 |
| 6 | 1.1.1.3 | MEMF-5: Try out the demo and optimize it for performance | 2d | 2017-05-07 | 2017-05-08 | 100% | mhaseeb | NUCDM-19 |
| 7 | 1.1.1.4 | MEL-3: Build the Azure demo application with MEL | 1d | 2017-04-19 | 2017-04-19 | 100% | fusman | NUCDM-20 |
| 8 | 1.1.1.5 | MEL-4: Verify switching network communication to USB Ethernet instead of Wi-Fi | 2d | 2017-05-08 | 2017-05-09 | 100% | fusman | NUCDM-21 |
| 9 | 1.1.1.6 | UI-1: Create new graphics for wall game aligning with the theme of Brain wave | 3d | 2017-04-11 | 2017-04-13 | 100% | emalik | NUCDM-22 |
| 10 | 1.1.1.7 | UI-2: Re-create Brain wave graphics to make space at the bottom for wall game buttons | 3d | 2017-04-12 | 2017-04-14 | 100% | emalik | NUCDM-23 |
| 11 | 1.1.1.8 | UI-3: Graphic Slicing | 22d | 2017-04-12 | 2017-05-03 | 100% | emalik | NUCDM-24 |
| 12 | 1.1.1.9 | UI-4: Readjustment of all screens and placing new elements | 22d | 2017-04-17 | 2017-05-08 | 100% | aanwar | NUCDM-25 |
| 13 | 1.1.1.10 | UI-4: Readjustment of all screens and placing new elements | 22d | 2017-04-17 | 2017-05-08 | 100% | aanwar | NUCDM-25 |
| 14 | 1.1.1.11 | UI-5: Re work on the application logic to consolidate both UIs | 16d | 2017-04-19 | 2017-05-04 | 100% | aanwar | NUCDM-26 |
| 15 | 1.1.1.12 | UI-6: Add sound in game | 1d | 2017-05-10 | 2017-05-10 |  | aanwar | NUCDM-27 |
| 16 | 1.1.1.13 | UI-9: Setup the UI in new environment (MEMF) | 2d | 2017-05-11 | 2017-05-12 |  | aanwar | NUCDM-30 |
| 17 | 1.1.1.14 | Build MEL(with Qt) and NU images for sabrelite for NU-MEL config | 2d | 2017-04-12 | 2017-04-13 | -100% | abdurr | NUCDM-32 |
| 18 | 1.1.1.15 | MEMF-1: Enable MEMF on MF0200 in Nucleus-MEL configuration with required Nucleus and MEL versions | 2d | 2017-04-13 | 2017-04-14 | 100% | mhaseeb | NUCDM-33 |
| 19 | 1.1.1.16 | MEMF-2: Build and run the MEL-Nucleus configuration on MF0200 | 1d | 2017-04-18 | 2017-04-18 | 100% | mhaseeb | NUCDM-34 |
| 20 | 1.1.1.17 | Verify memf and qt support in the resulting image | 2d | 2017-04-12 | 2017-04-13 | -100% | abdurr | NUCDM-35 |
| 21 | 1.1.1.18 | Write a basic Qt app | 2d | 2017-04-12 | 2017-04-13 | -100% | abdurr | NUCDM-36 |
| 22 | 1.1.1.19 | Integrate matrix multiplication demo in the Qt app | 1d | 2017-04-19 | 2017-04-19 | -100% | abdurr | NUCDM-37 |
| 23 | 1.1.1.20 | Verify that Nucleus is able to boot MEL successfully | 2d | 2017-04-18 | 2017-04-19 | -100% | ykhan | NUCDM-38 |
| 24 | 1.1.1.21 | MEL-5: Remove Ethernet from MEL so that NU can use that. | 2d | 2017-04-18 | 2017-04-19 | 106% | ykhan | NUCDM-39 |
| 25 | 1.1.1.22 | MEL-6: Update, build and run Router App on MEL OS | 5d | 2017-05-13 | 2017-05-17 |  | ykhan | NUCDM-40 |
| 26 | 1.1.1.23 | MEL-7: Finalize distro features for MEL build for demo | 1d | 2017-05-18 | 2017-05-18 |  |  | NUCDM-41 |
| 27 | 1.1.1.24 | MEL-8: Boot MEL as master with NU remote and commit changes in repo | 1d | 2017-04-18 | 2017-04-18 | 25% | ykhan | NUCDM-42 |
| 28 | 1.1.1.25 | MEMF-3: The ethernet device should be assigned to and used by the Nucleus machine | 17d | 2017-04-18 | 2017-05-04 | 100% | mhaseeb | NUCDM-43 |
| 29 | 1.1.1.26 | MEMF-4: Update the Nucleus application in accordance with latest game architecture | 13d | 2017-04-21 | 2017-05-03 | 100% | mhaseeb | NUCDM-44 |
| 30 | 1.1.1.27 | MEL should be able to boot Nucleus remote firmware successfully | 2d | 2017-04-17 | 2017-04-18 | -100% | ykhan | NUCDM-45 |
| 31 | 1.1.1.28 | Verify that rpmsg communication is successful between MEL and Nucleus | 2d | 2017-04-17 | 2017-04-18 | -100% | ykhan | NUCDM-46 |
| 32 | 1.1.1.29 | Commit changes into CSP MEMF layer | 1d | 2017-05-19 | 2017-05-19 | -100% |  | NUCDM-47 |
| 33 | 1.1.1.30 | Create a confluence page for building and booting MEL | 2d | 2017-04-19 | 2017-04-20 | -100% | ykhan | NUCDM-48 |
| 34 | 1.1.1.31 | MEL-10: Verify sound output and HDMI display | 1d | 2017-05-04 | 2017-05-04 | 100% | fusman | NUCDM-50 |
| 35 | 1.1.1.32 | Validate complete Game Wall System boot via power cycle (single button) | 3d | 2017-05-20 | 2017-05-22 |  | fusman | NUCDM-51 |
| 36 | 1.1.1.33 | MEL-11: Unable to fetch sources when bulding router app recipe | 1d | 2017-04-21 | 2017-04-21 | 100% | fusman | NUCDM-52 |
| 37 | 1.1.1.34 | MEL-12: Verify wifi connectivity using on-board wirless device. | 1d | 2017-05-04 | 2017-05-04 | 100% | fusman | NUCDM-53 |
| 38 | 1.1.1.35 | MEL-13: Add GeChic touchscreen driver to MEL | 1d | 2017-04-28 | 2017-04-28 | 100% | fusman | NUCDM-55 |

| ID | WBS | Task | Duration | Start | Finish | Resources | Jira |
| --- | --- | --- | --- | --- | --- | --- | --- |
| 39 | 1.1.2 | **Integration Milestone** | 17d | 2017-05-10 | 2017-05-26 |  | NUCDM-57 |
| 40 | 1.1.2.1 | Integration | 14d | 2017-05-10 | 2017-05-23 | vashi | NUCDM-59 |
